# WBS Teresa martin mejoras

Schedule from MS Project, 2015-06-16 to 2015-09-04, costs in $.

## Calendars

- Estándar: Mon-Fri 09:00-13:00, 15:00-19:00; Sat-Sun off.

## Resources

| Resource | Rate |
| --- | --- |
| Lider | 233 |
| Analista | 125 |
| Diseñador | 149 |
| Programador | 110 |
| Tester | 115 |

## Schedule

| ID | WBS | Task | Duration | Start | Finish | Predecessors | Total slack | Constraint | Resources | Work | Cost |
| --- | --- | --- | --- | --- | --- | --- | --- | --- | --- | --- | --- |
| 1 | 1 | **Teresa Martin** | 58.5d | 2015-06-16 09:00 | 2015-09-04 13:00 |  | 0d |  |  | 623h | 57,394 |
| 2 | 1.1 | **1-Planeación de proyecto.** | 6.62d | 2015-06-16 09:00 | 2015-06-24 16:00 |  | 0d |  |  | 53h | 6,175 |
| 3 | 1.1.1 | 1.1-Carta de iniciación del proyecto. | 2h | 2015-06-16 09:00 | 2015-06-16 11:00 |  | 0d |  | Lider | 2h | 238 |
| 4 | 1.1.2 | 1.2-Minuta de reunión de arranque. | 2h | 2015-06-16 11:00 | 2015-06-16 13:00 | 3 | 0d | start no earlier than 2015-04-06 09:00 | Lider | 2h | 238 |
| 5 | 1.1.3 | 1.3-Políticas. | 3h | 2015-06-16 15:00 | 2015-06-16 18:00 | 4 | 0d |  | Lider | 3h | 357 |
| 6 | 1.1.4 | 1.4-Organigrama. | 1h | 2015-06-16 18:00 | 2015-06-16 19:00 | 5 | 0d |  | Lider | 1h | 119 |
| 7 | 1.1.5 | 1.5-Alcance. | 1h | 2015-06-17 09:00 | 2015-06-17 10:00 | 6 | 0d | start no earlier than 2015-04-07 09:00 | Lider | 1h | 119 |
| 8 | 1.1.6 | 1.6-Plan de CM. | 2h | 2015-06-17 10:00 | 2015-06-17 12:00 | 7 | 0d |  | Lider | 2h | 238 |
| 9 | 1.1.7 | 1.7-Definición de ciclo de vida. | 1h | 2015-06-17 12:00 | 2015-06-17 13:00 | 8 | 0d |  |  |  |  |
| 10 | 1.1.8 | 1.8-Matriz de responsabilidades. | 4h | 2015-06-17 15:00 | 2015-06-17 19:00 | 9 | 0d |  | Lider | 4h | 476 |
| 11 | 1.1.9 | 1.9-Diagrama de Gantt(Wbs). | 3h | 2015-06-18 09:00 | 2015-06-18 12:00 | 10 | 0d |  |  |  |  |
| 12 | 1.1.10 | 1.10-Plan de alcance. | 1h | 2015-06-18 12:00 | 2015-06-18 13:00 | 11 | 0d |  | Lider | 1h | 119 |
| 13 | 1.1.11 | 1.11-Matriz de comunicación y justificación. | 3h | 2015-06-18 15:00 | 2015-06-18 18:00 | 12 | 0d |  | Lider | 3h | 357 |
| 14 | 1.1.12 | 1.12-Plan de proyecto. | 4h | 2015-06-18 18:00 | 2015-06-19 12:00 | 13 | 0d | start no earlier than 2015-04-09 09:00 | Analista; Lider | 8h | 820 |
| 15 | 1.1.13 | 1.13.-No hay planeacion | 13h | 2015-06-19 12:00 | 2015-06-22 19:00 | 14 | 0d |  | Lider | 13h | 1,547 |
| 16 | 1.1.14 | 1.14-Instalaciones están disponibles pero insuficiente (por ejemplo, ningún teléfono, red de cableado, mobiliario, etc) | 13h | 2015-06-23 09:00 | 2015-06-24 16:00 | 15 | 0d |  | Lider | 13h | 1,547 |
| 17 | 1.2 | **Primera iteracion.** | 24.62d | 2015-06-24 16:00 | 2015-07-29 11:00 | 2 | 0d |  |  | 222h | 20,148 |
| 18 | 1.2.1 | **2-Análisis.** | 3.25d | 2015-06-24 16:00 | 2015-06-29 18:00 | 2 | 0d |  |  | 26h | 2,368 |
| 19 | 1.2.1.1 | 2.1-Evaluar proveedores de req. a entrevistar | 4h | 2015-06-24 16:00 | 2015-06-25 10:00 | 14 | 0d |  | Lider | 4h | 476 |
| 20 | 1.2.1.2 | 2.2-Definición de estrategia de recolección de req. | 4h | 2015-06-25 10:00 | 2015-06-25 16:00 | 19 | 0d | start no earlier than 2015-04-07 09:00 | Analista | 4h | 344 |
| 21 | 1.2.1.3 | 2.3-Planificar reuniones de elicitación de req. | 3h | 2015-06-25 16:00 | 2015-06-25 19:00 | 20 | 0d |  | Analista | 3h | 258 |
| 22 | 1.2.1.4 | 2.4-Identificar procesos del sistema. | 3h | 2015-06-26 09:00 | 2015-06-26 12:00 | 21 | 0d | start no earlier than 2015-04-13 09:00 | Analista | 3h | 258 |
| 23 | 1.2.1.5 | 2.5-Identificar los req. funcionales. | 3h | 2015-06-26 12:00 | 2015-06-26 17:00 | 22 | 0d |  | Analista | 3h | 258 |
| 24 | 1.2.1.6 | 2.6-Identificar los req. no funcionales. | 1h | 2015-06-26 17:00 | 2015-06-26 18:00 | 23 | 0d |  | Analista | 1h | 86 |
| 25 | 1.2.1.7 | 2.7-Especificación de req. Funcionales y no funcionales. | 4h | 2015-06-26 18:00 | 2015-06-29 12:00 | 24 | 0d | start no earlier than 2015-04-14 09:00 | Analista | 4h | 344 |
| 26 | 1.2.1.8 | 2.8-Gestión de req. Funcionales y no funcionales. | 4h | 2015-06-29 12:00 | 2015-06-29 18:00 | 25 | 0d |  | Analista | 4h | 344 |

| ID | WBS | Task | Duration | Start | Finish | Predecessors | Total slack | Constraint | Resources | Work | Cost |
| --- | --- | --- | --- | --- | --- | --- | --- | --- | --- | --- | --- |
| 27 | 1.2.2 | **3-Diseño.** | 4.88d | 2015-06-29 18:00 | 2015-07-06 17:00 | 18 | 0d |  |  | 39h | 3,524 |
| 28 | 1.2.2.1 | 3.1-Justificar el patrón de diseño a utilizar. | 2h | 2015-06-29 18:00 | 2015-06-30 10:00 | 26 | 0d |  | Diseñador | 2h | 206 |
| 29 | 1.2.2.2 | 3.2-Estructura del Proyecto. | 2h | 2015-06-30 10:00 | 2015-06-30 12:00 | 28 | 0d |  | Analista | 2h | 172 |
| 30 | 1.2.2.3 | 3.3-Diagrama de actividades. | 2h | 2015-06-30 12:00 | 2015-06-30 16:00 | 29 | 0d |  | Analista | 2h | 172 |
| 31 | 1.2.2.4 | 3.4-Diagramas de casos de uso. | 2h | 2015-06-30 16:00 | 2015-06-30 18:00 | 30 | 0d | start no earlier than 2015-04-16 09:00 | Analista | 2h | 172 |
| 32 | 1.2.2.5 | 3.5-Diagramas de secuencia. | 3h | 2015-06-30 18:00 | 2015-07-01 11:00 | 31 | 0d | start no earlier than 2015-04-16 09:00 | Analista | 3h | 258 |
| 33 | 1.2.2.6 | 3.6-Diagra de clases. | 4h | 2015-07-01 11:00 | 2015-07-01 17:00 | 32 | 0d | start no earlier than 2015-04-17 09:00 | Analista | 4h | 344 |
| 34 | 1.2.2.7 | 3.7-Diagrama de rol. | 2h | 2015-07-01 17:00 | 2015-07-01 19:00 | 33 | 0d | start no earlier than 2015-04-17 09:00 | Analista | 2h | 172 |
| 35 | 1.2.2.8 | 3.8-Diagrama de interación. | 2h | 2015-07-02 09:00 | 2015-07-02 11:00 | 34 | 0d | start no earlier than 2015-04-17 09:00 | Analista | 2h | 172 |
| 36 | 1.2.2.9 | 3.9-Diagrama de componentes. | 2h | 2015-07-02 11:00 | 2015-07-02 13:00 | 35 | 0d | start no earlier than 2015-04-20 09:00 | Analista | 2h | 172 |
| 37 | 1.2.2.10 | 3.10-Diagrama despliegue. | 2h | 2015-07-02 15:00 | 2015-07-02 17:00 | 36 | 0d | start no earlier than 2015-04-20 09:00 | Analista | 2h | 172 |
| 38 | 1.2.2.11 | **3.11-Base de datos.** | 1d | 2015-07-02 17:00 | 2015-07-03 17:00 | 37 | 0d |  |  | 8h | 688 |
| 39 | 1.2.2.11.1 | 3.11.1-Diagrama entidad relación. | 0.5d | 2015-07-02 17:00 | 2015-07-03 11:00 | 37 | 0d |  | Analista | 4h | 344 |
| 40 | 1.2.2.11.2 | 3.11.2-Diagrama relacional. | 4h | 2015-07-03 11:00 | 2015-07-03 17:00 | 39 | 0d |  | Analista | 4h | 344 |
| 41 | 1.2.2.12 | 3.12-Maquetación. | 4h | 2015-07-03 17:00 | 2015-07-06 11:00 | 40 | 0d |  | Diseñador | 4h | 412 |
| 42 | 1.2.2.13 | 3.13-Mapa de navegación. | 4h | 2015-07-06 11:00 | 2015-07-06 17:00 | 41 | 0d |  | Diseñador | 4h | 412 |
| 43 | 1.2.3 | **4-Codificación.** | 12.75d | 2015-07-06 17:00 | 2015-07-23 13:00 | 27 | 0d |  |  | 114h | 10,183 |
| 44 | 1.2.3.1 | 4.1-Creación de la DB. | 3h | 2015-07-06 17:00 | 2015-07-07 10:00 | 27 | 0d |  | Programador | 3h | 216 |
| 45 | 1.2.3.2 | 4.2-Conexión a DB. | 2h | 2015-07-07 10:00 | 2015-07-07 12:00 | 44 | 0d |  | Programador | 2h | 144 |
| 46 | 1.2.3.3 | **4.3-Módulo alumnos.** | 4d | 2015-07-07 12:00 | 2015-07-13 12:00 | 45 | 0d |  |  | 32h | 2,800 |
| 47 | 1.2.3.3.1 | 4.3.1-Interfaz. | 16h | 2015-07-07 12:00 | 2015-07-09 12:00 | 45 | 0d | start no earlier than 2015-04-24 09:00 | Diseñador | 16h | 1,648 |
| 48 | 1.2.3.3.2 | 4.3.2-Alta de alumno. | 6h | 2015-07-09 12:00 | 2015-07-10 10:00 | 47 | 0d |  | Programador | 6h | 432 |
| 49 | 1.2.3.3.3 | 4.3.3-Baja de alumno. | 2h | 2015-07-10 10:00 | 2015-07-10 12:00 | 48 | 0d |  | Programador | 2h | 144 |
| 50 | 1.2.3.3.4 | 4.3.4-Actualización de alumno. | 5h | 2015-07-10 12:00 | 2015-07-10 19:00 | 49 | 0d | start no earlier than 2015-04-30 09:00 | Programador | 5h | 360 |
| 51 | 1.2.3.3.5 | 4.3.5-Consultar alumnos. | 3h | 2015-07-13 09:00 | 2015-07-13 12:00 | 50 | 0d | start no earlier than 2015-04-30 09:00 | Programador | 3h | 216 |

| ID | WBS | Task | Duration | Start | Finish | Predecessors | Total slack | Constraint | Resources | Work | Cost |
| --- | --- | --- | --- | --- | --- | --- | --- | --- | --- | --- | --- |
| 52 | 1.2.3.4 | **4.4-Módulo pagos** | 1.75d | 2015-07-13 12:00 | 2015-07-15 10:00 | 46 | 0d |  |  | 14h | 1,132 |
| 53 | 1.2.3.4.1 | 4.4.1-Interfaz. | 4h | 2015-07-13 12:00 | 2015-07-13 18:00 | 51 | 0d |  | Diseñador | 4h | 412 |
| 54 | 1.2.3.4.2 | 4.4.2-Pago de colegiaturas. | 4h | 2015-07-13 18:00 | 2015-07-14 12:00 | 53 | 0d |  | Programador | 4h | 288 |
| 55 | 1.2.3.4.3 | 4.4.3-Editar pago. | 3h | 2015-07-14 12:00 | 2015-07-14 17:00 | 54 | 0d |  | Programador | 3h | 216 |
| 56 | 1.2.3.4.4 | 4.4.4-Eliminar pago. | 1h | 2015-07-14 17:00 | 2015-07-14 18:00 | 55 | 0d |  | Programador | 1h | 72 |
| 57 | 1.2.3.4.5 | 4.4.5-Consultar pago. | 2h | 2015-07-14 18:00 | 2015-07-15 10:00 | 56 | 0d |  | Programador | 2h | 144 |
| 58 | 1.2.3.5 | **4.5-Módulo becas** | 2.5d | 2015-07-15 10:00 | 2015-07-17 16:00 | 57 | 0d |  |  | 20h | 1,750 |
| 59 | 1.2.3.5.1 | 4.5.1-Interfaz. | 10h | 2015-07-15 10:00 | 2015-07-16 12:00 | 57 | 0d | finish no earlier than 2015-05-05 19:00 | Diseñador | 10h | 1,030 |
| 60 | 1.2.3.5.2 | 4.5.2-Asignar beca. | 3h | 2015-07-16 12:00 | 2015-07-16 17:00 | 59 | 0d |  | Programador | 3h | 216 |
| 61 | 1.2.3.5.3 | 4.5.3-Editar beca. | 3h | 2015-07-16 17:00 | 2015-07-17 10:00 | 60 | 0d | start no earlier than 2015-05-06 09:00 | Programador | 3h | 216 |
| 62 | 1.2.3.5.4 | 4.5.4-Eliminar beca. | 2h | 2015-07-17 10:00 | 2015-07-17 12:00 | 61 | 0d | start no earlier than 2015-05-07 09:00 | Programador | 2h | 144 |
| 63 | 1.2.3.5.5 | 4.5.5-Consultar beca. | 2h | 2015-07-17 12:00 | 2015-07-17 16:00 | 62 | 0d | start no earlier than 2015-05-07 09:00 | Programador | 2h | 144 |
| 64 | 1.2.3.6 | **4.6-Módulo reportes.** | 1d | 2015-07-17 16:00 | 2015-07-20 16:00 | 58 | 0d |  |  | 16h | 1,400 |
| 65 | 1.2.3.6.1 | 4.6.1-Interfaz. | 8h | 2015-07-17 16:00 | 2015-07-20 16:00 | 58 | 0d | finish no earlier than 2015-05-07 19:00 | Diseñador | 8h | 824 |
| 66 | 1.2.3.6.2 | 4.6.2-Consultar pagos. | 2h | 2015-07-17 16:00 | 2015-07-17 18:00 | 63 | 0d | start no earlier than 2015-05-08 09:00 | Programador | 2h | 144 |
| 67 | 1.2.3.6.3 | 4.6.3-Consultar alumnos. | 2h | 2015-07-17 18:00 | 2015-07-20 10:00 | 66 | 0d | start no earlier than 2015-05-08 09:00 | Programador | 2h | 144 |
| 68 | 1.2.3.6.4 | 4.6.4-Colsultar becas. | 2h | 2015-07-20 10:00 | 2015-07-20 12:00 | 67 | 0d | start no earlier than 2015-05-08 09:00 | Programador | 2h | 144 |
| 69 | 1.2.3.6.5 | 4.6.5-Consultar ciclos. | 2h | 2015-07-20 12:00 | 2015-07-20 16:00 | 68 | 0d | start no earlier than 2015-05-08 09:00 | Programador | 2h | 144 |
| 70 | 1.2.3.7 | **4.7-Módulo Ciclos** | 1.25d | 2015-07-20 16:00 | 2015-07-21 18:00 | 64 | 0d |  |  | 14h | 1,194 |
| 71 | 1.2.3.7.1 | 4.7.1-Interfaz. | 6h | 2015-07-20 16:00 | 2015-07-21 12:00 | 69 | 0d |  | Diseñador | 6h | 618 |
| 72 | 1.2.3.7.2 | 4.7.2-Asignar ciclo. | 2h | 2015-07-21 12:00 | 2015-07-21 16:00 | 71 | 0d | start no earlier than 2015-05-12 09:00 | Programador | 2h | 144 |
| 73 | 1.2.3.7.3 | 4.7.3-Editar ciclo. | 2h | 2015-07-21 16:00 | 2015-07-21 18:00 | 72 | 1.62d |  | Programador | 2h | 144 |
| 74 | 1.2.3.7.4 | 4.7.4-Eliminar ciclo. | 2h | 2015-07-21 16:00 | 2015-07-21 18:00 | 72 | 1.62d |  | Programador | 2h | 144 |
| 75 | 1.2.3.7.5 | 4.7.5-Consultar ciclo. | 2h | 2015-07-21 16:00 | 2015-07-21 18:00 | 72 | 0d |  | Programador | 2h | 144 |
| 76 | 1.2.3.8 | 4.8-El personal necesita tiempo extra para comprender las herramientas de software desconocidas o el entorno | 13h | 2015-07-21 18:00 | 2015-07-23 13:00 | 75 | 0d |  | Lider | 13h | 1,547 |

| ID | WBS | Task | Duration | Start | Finish | Predecessors | Total slack | Constraint | Resources | Work | Cost |
| --- | --- | --- | --- | --- | --- | --- | --- | --- | --- | --- | --- |
| 77 | 1.2.4 | **5-Pruebas.** | 1.88d | 2015-07-23 15:00 | 2015-07-27 12:00 | 43 | 0d |  |  | 15h | 1,170 |
| 78 | 1.2.4.1 | 5.1-Pruebas unitarias. | 4h | 2015-07-23 15:00 | 2015-07-23 19:00 | 75 | 0d |  | Tester | 4h | 312 |
| 79 | 1.2.4.2 | 5.2-Pruebas de integración. | 3h | 2015-07-24 09:00 | 2015-07-24 12:00 | 78 | 0d |  | Tester | 3h | 234 |
| 80 | 1.2.4.3 | 5.3-Pruebas de rendimiento. | 4h | 2015-07-24 12:00 | 2015-07-24 18:00 | 79 | 0d | start no earlier than 2015-05-15 09:00 | Tester | 4h | 312 |
| 81 | 1.2.4.4 | 5.4-Pruebas del sistema. | 4h | 2015-07-24 18:00 | 2015-07-27 12:00 | 80 | 0d | start no earlier than 2015-05-15 09:00 | Tester | 4h | 312 |
| 82 | 1.2.5 | 6-Entrega versión base. | 2h | 2015-07-27 12:00 | 2015-07-27 16:00 | 77 | 0d | start no earlier than 2015-05-14 09:00 | Lider | 2h | 238 |
| 83 | 1.2.6 | 7-Calidad inaceptable requiere de más pruebas, diseño y trabajo de implementación para corregir, más de lo esperado | 13h | 2015-07-27 16:00 | 2015-07-29 11:00 | 82 | 0d |  | Analista; Lider | 26h | 2,665 |
| 84 | 1.3 | **Segunda iteracion.** | 15.5d | 2015-07-29 11:00 | 2015-08-19 17:00 | 17 | 0d |  |  | 204h | 18,119 |
| 85 | 1.3.1 | **1-Análisis versión 0.1** | 1.12d | 2015-07-29 11:00 | 2015-07-30 12:00 | 82 | 0d |  |  | 9h | 873 |
| 86 | 1.3.1.1 | 1.1-Identificar procesos del sistema. | 3h | 2015-07-29 11:00 | 2015-07-29 16:00 | 82 | 0d |  | Lider | 3h | 357 |
| 87 | 1.3.1.2 | 1.2-Minuta de reunión. | 2h | 2015-07-29 16:00 | 2015-07-29 18:00 | 86 | 0d |  | Analista | 2h | 172 |
| 88 | 1.3.1.3 | 1.3-Identificar los req. funcionales. | 2h | 2015-07-29 18:00 | 2015-07-30 10:00 | 87 | 0d | start no earlier than 2015-05-15 09:00 | Analista | 2h | 172 |
| 89 | 1.3.1.4 | 1.4-Identificar los req. no funcionales. | 2h | 2015-07-30 10:00 | 2015-07-30 12:00 | 88 | 0d |  | Analista | 2h | 172 |
| 90 | 1.3.2 | **2-Diseño versión 0.1** | 1.12d | 2015-07-30 12:00 | 2015-07-31 13:00 | 85 | 0d |  |  | 9h | 808 |
| 91 | 1.3.2.1 | 2.1-Diagrama de rol. | 2h | 2015-07-30 12:00 | 2015-07-30 16:00 | 89 | 0d |  | Analista | 2h | 172 |
| 92 | 1.3.2.2 | 2.2-Diagrama de interación. | 2h | 2015-07-30 16:00 | 2015-07-30 18:00 | 91 | 0d |  | Analista | 2h | 172 |
| 93 | 1.3.2.3 | 2.3-Diagrama de componentes. | 2h | 2015-07-30 18:00 | 2015-07-31 10:00 | 92 | 0d | start no earlier than 2015-05-14 09:00 | Analista | 2h | 172 |
| 94 | 1.3.2.4 | 2.4-Diagrama despliegue. | 1h | 2015-07-31 10:00 | 2015-07-31 11:00 | 93 | 0d | start no earlier than 2015-05-14 09:00 | Analista | 1h | 86 |
| 95 | 1.3.2.5 | 2.5-Maquetación. | 1h | 2015-07-31 11:00 | 2015-07-31 12:00 | 94 | 0d |  | Diseñador | 1h | 103 |
| 96 | 1.3.2.6 | 2.6-Mapa de naveción. | 1h | 2015-07-31 12:00 | 2015-07-31 13:00 | 95 | 0d | start no earlier than 2015-05-14 09:00 | Diseñador | 1h | 103 |
| 97 | 1.3.3 | **3-Codificación versión 0.1** | 10d | 2015-07-31 15:00 | 2015-08-14 13:00 | 90 | 0d |  |  | 160h | 14,000 |
| 98 | 1.3.3.1 | 3.1-Módulo alumnos versión0.1. | 16h | 2015-07-31 15:00 | 2015-08-04 13:00 | 96 | 0d |  | Programador; Diseñador | 32h | 2,800 |
| 99 | 1.3.3.2 | 3.2-Módulo pagos versión0.1. | 16h | 2015-08-04 15:00 | 2015-08-06 13:00 | 98 | 0d |  | Programador; Diseñador | 32h | 2,800 |
| 100 | 1.3.3.3 | 3.3-Módulo becas versión0.1. | 16h | 2015-08-06 15:00 | 2015-08-10 13:00 | 99 | 0d |  | Programador; Diseñador | 32h | 2,800 |
| 101 | 1.3.3.4 | 3.4-Módulo reportes versión0.1. | 16h | 2015-08-10 15:00 | 2015-08-12 13:00 | 100 | 0d |  | Programador; Diseñador | 32h | 2,800 |
| 102 | 1.3.3.5 | 3.5-Módulo ciclos versión0.1. | 16h | 2015-08-12 15:00 | 2015-08-14 13:00 | 101 | 0d |  | Diseñador; Programador | 32h | 2,800 |

| ID | WBS | Task | Duration | Start | Finish | Predecessors | Total slack | Resources | Work | Cost |
| --- | --- | --- | --- | --- | --- | --- | --- | --- | --- | --- |
| 103 | 1.3.4 | **4-Pruebas versión 0.1** | 2d | 2015-08-14 15:00 | 2015-08-18 13:00 | 97 | 0d |  | 16h | 1,248 |
| 104 | 1.3.4.1 | 4.1-Pruebas unitarias versión0.1. | 4h | 2015-08-14 15:00 | 2015-08-14 19:00 | 102 | 0d | Tester | 4h | 312 |
| 105 | 1.3.4.2 | 4.2-Pruebas de integración versión0.1. | 4h | 2015-08-17 09:00 | 2015-08-17 13:00 | 104 | 0d | Tester | 4h | 312 |
| 106 | 1.3.4.3 | 4.3-Pruebas de rendimiento versión0.1. | 4h | 2015-08-17 15:00 | 2015-08-17 19:00 | 105 | 0d | Tester | 4h | 312 |
| 107 | 1.3.4.4 | 4.4-Pruebas del sistema versión0.1. | 4h | 2015-08-18 09:00 | 2015-08-18 13:00 | 106 | 0d | Tester | 4h | 312 |
| 108 | 1.3.5 | 5-Entrega versión 0.1 | 3h | 2015-08-18 15:00 | 2015-08-18 18:00 | 103 | 0d | Lider | 3h | 357 |
| 109 | 1.3.6 | 6- No se tienen respaldos de las verciones del proyecto | 7h | 2015-08-18 18:00 | 2015-08-19 17:00 | 108 | 0d | Lider | 7h | 833 |
| 110 | 1.4 | **Tercera interacion** | 9.12d | 2015-08-19 17:00 | 2015-09-01 18:00 | 84 | 0d |  | 123h | 10,735 |
| 111 | 1.4.1 | **1-Análisis versió 0.2** | 0.12d | 2015-08-19 17:00 | 2015-08-19 18:00 | 108 | 0d |  | 1h | 119 |
| 112 | 1.4.1.1 | 1.1-Minuta de reunión versión0.2. | 1h | 2015-08-19 17:00 | 2015-08-19 18:00 | 108 | 0d | Lider | 1h | 119 |
| 113 | 1.4.2 | **2-Diseño version 0.2** | 0.75d | 2015-08-19 18:00 | 2015-08-20 16:00 | 111 | 0d |  | 6h | 618 |
| 114 | 1.4.2.1 | 2.1-Maquetación versión0.2. | 3h | 2015-08-19 18:00 | 2015-08-20 11:00 | 112 | 0d | Diseñador | 3h | 309 |
| 115 | 1.4.2.2 | 2.2-Mapa de naveción versión0.2. | 3h | 2015-08-20 11:00 | 2015-08-20 16:00 | 114 | 0d | Diseñador | 3h | 309 |
| 116 | 1.4.3 | **3-Codificación versión0.2** | 6.25d | 2015-08-20 16:00 | 2015-08-28 18:00 | 113 | 0d |  | 100h | 8,750 |
| 117 | 1.4.3.1 | 3.1-Módulo alumnos versión0.2. | 10h | 2015-08-20 16:00 | 2015-08-21 18:00 |  | 0d | Programador; Diseñador | 20h | 1,750 |
| 118 | 1.4.3.2 | 3.2-Módulo pagos versión0.2. | 10h | 2015-08-21 18:00 | 2015-08-25 10:00 | 117 | 0d | Programador; Diseñador | 20h | 1,750 |
| 119 | 1.4.3.3 | 3.3-Módulo becas versión0.2. | 10h | 2015-08-25 10:00 | 2015-08-26 12:00 | 118 | 0d | Programador; Diseñador | 20h | 1,750 |
| 120 | 1.4.3.4 | 3.4-Módulo reportes versión0.2. | 10h | 2015-08-26 12:00 | 2015-08-27 16:00 | 119 | 0d | Programador; Diseñador | 20h | 1,750 |
| 121 | 1.4.3.5 | 3.5-Módulo ciclos versión0.2. | 10h | 2015-08-27 16:00 | 2015-08-28 18:00 | 120 | 0d | Diseñador; Programador | 20h | 1,750 |
| 122 | 1.4.4 | **4-Pruebas versión 0.2** | 2d | 2015-08-28 18:00 | 2015-09-01 18:00 | 116 | 0d |  | 16h | 1,248 |
| 123 | 1.4.4.1 | 4.1-Pruebas de rendimiento versión0.2. | 8h | 2015-08-28 18:00 | 2015-08-31 18:00 |  | 0d | Tester | 8h | 624 |
| 124 | 1.4.4.2 | 4.2-Pruebas del sistema 0.2. | 8h | 2015-08-31 18:00 | 2015-09-01 18:00 | 123 | 0d | Tester | 8h | 624 |
| 125 | 1.5 | **5-Implementación.** | 0.75d | 2015-09-01 18:00 | 2015-09-02 16:00 | 110 | 0d |  | 6h | 432 |
| 126 | 1.5.1 | 5.1-Elección del hosting. | 3h | 2015-09-01 18:00 | 2015-09-02 11:00 | 124 | 0d | Programador | 3h | 216 |
| 127 | 1.5.2 | 5.2-Copiar los archivos fuente. | 3h | 2015-09-02 11:00 | 2015-09-02 16:00 | 126 | 0d | Programador | 3h | 216 |

| ID | WBS | Task | Duration | Start | Finish | Predecessors | Total slack | Constraint | Resources | Work | Cost |
| --- | --- | --- | --- | --- | --- | --- | --- | --- | --- | --- | --- |
| 128 | 1.6 | **6-Cierre del Proyecto.** | 1.5d | 2015-09-02 16:00 | 2015-09-04 10:00 | 125 | 0d |  |  | 12h | 1,428 |
| 129 | 1.6.1 | 6.1-Carta de aceptación. | 1h | 2015-09-02 16:00 | 2015-09-02 17:00 | 127 | 0d |  | Lider | 1h | 119 |
| 130 | 1.6.2 | 6.2-Acta de cierrede proyectos. | 1h | 2015-09-02 17:00 | 2015-09-02 18:00 | 129 | 0d |  | Lider | 1h | 119 |
| 131 | 1.6.3 | 6.3-Evaluación de desempeño. | 3h | 2015-09-02 18:00 | 2015-09-03 11:00 | 130 | 0d |  | Lider | 3h | 357 |
| 132 | 1.6.4 | 6.4-Liberación de recursos. | 2h | 2015-09-03 11:00 | 2015-09-03 13:00 | 131 | 0d |  | Lider | 2h | 238 |
| 133 | 1.6.5 | 6.5-Lecciones aprendidas. | 3h | 2015-09-03 15:00 | 2015-09-03 18:00 | 132 | 0d | start no earlier than 2015-06-12 09:00 | Lider | 3h | 357 |
| 134 | 1.6.6 | 6.6-Informe final(cierre). | 2h | 2015-09-03 18:00 | 2015-09-04 10:00 | 133 | 0d |  | Lider | 2h | 238 |
| 135 | 1.7 | 7-Entrega final. | 3h | 2015-09-04 10:00 | 2015-09-04 13:00 | 134, 128 | 0d |  | Lider | 3h | 357 |
